| uid | wbsOrder | name | start | finish | notes | actualStart | actualFinish | percentComplete | dependencies | milestone |
| --- | --- | --- | --- | --- | --- | --- | --- | --- | --- | --- |
| 1 | 1 | CR-751(GRS JSON スキーマの自己説明)の適用 | 2026-10-15T02:00:00 | 2026-10-15T03:04:00 | 02:00 は土台 43b7315a、03:04 は dist の作り直し 102a8474。 | 2026-10-15T02:00:00 | 2026-10-15T03:04:00 | 100 |  |  |
| 50 | 2 | 試験待ち 6 行(DFC-2449〜2466)の仕様だけを読む試験の作成 | 2026-10-15T02:15:00 | 2026-10-15T02:32:00 | 9792e32f、合流 fb383e8f。 | 2026-10-15T02:15:00 | 2026-10-15T02:32:00 | 100 |  |  |
| 51 | 3 | 1 枚のチェックリスト(user-checklist-2026-10-15)の起草 | 2026-10-15T02:15:00 | 2026-10-15T02:41:00 | c5aef0cc・0262b17a、合流 a0dcc673。 | 2026-10-15T02:15:00 | 2026-10-15T02:41:00 | 100 |  |  |
| 52 | 4 | CR-740・752・753(覚え置き・呼び方・Ctrl の写し)の起草 | 2026-10-15T02:15:00 | 2026-10-15T03:40:00 | 06f8e4a9・f55e1f58、合流 e9d2a243。 | 2026-10-15T02:15:00 | 2026-10-15T03:40:00 | 100 |  |  |
| 53 | 5 | CR-758(依存線とマーカーの干渉解消)の起草 | 2026-10-15T02:15:00 | 2026-10-15T03:40:00 | 6201a739・d4c9a219、合流 bc632547。 | 2026-10-15T02:15:00 | 2026-10-15T03:40:00 | 100 |  |  |
| 3 | 6 | 表の窓の聞き取り(DFC-2600〜2615)の記録 | 2026-10-15T02:20:00 | 2026-10-15T03:53:00 | 4134b69f、合流 0d9fdb3f。 | 2026-10-15T02:20:00 | 2026-10-15T03:53:00 | 100 |  |  |
| 5 | 7 | 工程の強制の道具(push の見張り・検査 78〜80)の実装 | 2026-10-15T02:20:00 | 2026-10-15T04:13:00 | 076bd74c、合流 7c364713。push 済み 92015a29。 | 2026-10-15T02:20:00 | 2026-10-15T04:13:00 | 100 |  |  |
| 54 | 8 | CR-754〜757(設定パネル・タイムゾーン・ダミー実績・全体シフト)の起草 | 2026-10-15T02:20:00 | 2026-10-15T05:57:00 | d5eb0800 ほか、合流 a773ede9・6d81c750。 | 2026-10-15T02:20:00 | 2026-10-15T05:57:00 | 100 |  |  |
| 6 | 9 | JDG-2071(仕様書が正)の権威の調査 | 2026-10-15T02:40:00 | 2026-10-15T04:09:00 | bc3ee32d、合流 d60bdf78。 | 2026-10-15T02:40:00 | 2026-10-15T04:09:00 | 100 |  |  |
| 55 | 10 | 紹介頁(docs/about)のダーク切替の実装 | 2026-10-15T02:40:00 | 2026-10-15T04:05:00 | 8b7f8e54、合流 e092ae24。push 済み。 | 2026-10-15T02:40:00 | 2026-10-15T04:05:00 | 100 |  |  |
| 56 | 11 | プロジェクト計画(project-plan)の初版と直し | 2026-10-15T03:44:00 | 2026-10-15T05:09:00 | 初版 5b305da1 から吹き出しの直し 4a907919 まで。始まりはこの席の最初の測り。 | 2026-10-15T03:44:00 | 2026-10-15T05:09:00 | 100 |  |  |
| 4 | 12 | CR-753(Ctrl ドラッグの写しを移動と同じ所へ)の実装 | 2026-10-15T04:13:00 | 2026-10-15T05:53:00 | c76c7ee3、合流 bce31827。 | 2026-10-15T04:13:00 | 2026-10-15T05:53:00 | 100 |  |  |
| 8 | 13 | CR-752(公開名の呼び方と直す案の行の鍵)の仕様反映 | 2026-10-15T04:55:00 | 2026-10-15T06:15:00 | 9fec527e、合流 fc80c39b、台帳 66d989c6。 | 2026-10-15T04:55:00 | 2026-10-15T06:15:00 | 100 |  |  |
| 57 | 14 | STOP の印の仕分け(DFC-2647)の調べ | 2026-10-15T05:09:00 | 2026-10-15T05:36:00 | 75c38edf、合流 c77b5211。 | 2026-10-15T05:09:00 | 2026-10-15T05:36:00 | 100 |  |  |
| 33 | 15 | CR-759〜762(表の窓)の起草 | 2026-10-15T05:02:00 | 2026-10-15T07:08:00 | 03b7d3a8・5daf3df8、合流 65aac09f・d41292d1。 | 2026-10-15T05:02:00 | 2026-10-15T07:08:00 | 100 |  |  |
| 58 | 16 | CR-765〜768(仕様が正の原稿)の起草 | 2026-10-15T05:09:00 | 2026-10-15T06:07:00 | 04d5c89c・71a52294、合流 8e7f1419・8f6647f4。 | 2026-10-15T05:09:00 | 2026-10-15T06:07:00 | 100 |  |  |
| 59 | 17 | CR-763/764・766・767(飛び先・命令の値・状態機械)の問いへの答え | 2026-10-15T21:00:00 | 2026-10-15T22:00:00 | CR-763/764 は利用者の問い待ち、CR-766 は問い 1、CR-767 は問い 3。利用者の時間帯で 1 時間。外で答えが出れば、それを待つ仕事は早まる。 |  |  | 0 |  |  |
| 7 | 18 | CR-740(範囲選択中の下の絵の覚え置き)の性能の要求の試験 | 2026-10-15T07:45:00 | 2026-10-15T08:45:00 | 性能の測りは済み。残りの試験を大きさ S の半分で置いた。 |  |  | 0 |  |  |
| 9 | 19 | CR-758(依存線とマーカーの干渉解消)の実装の仕上げ | 2026-10-15T07:45:00 | 2026-10-15T09:45:00 | 試験 60 は緑。frame-loop.ts を 1 行触る。 |  |  | 0 |  |  |
| 23 | 20 | CR-757(全体日程のシフト)の仕様だけを読む試験 | 2026-10-15T07:45:00 | 2026-10-15T09:45:00 | 体が当て終えた(ac41487f)。試験の体が動いている。 |  |  | 0 |  |  |
| 60 | 21 | プロジェクト計画(project-plan)の更新 | 2026-10-15T07:45:00 | 2026-10-15T08:15:00 | この更新。 |  |  | 0 |  |  |
| 61 | 22 | 英語の慣習の見直し(CR-769〜771)の調べ | 2026-10-15T07:45:00 | 2026-10-15T09:45:00 | 調べの席が動いている。残りを S で置いた。 |  |  | 0 |  |  |
| 62 | 23 | CR-740(範囲選択中の下の絵の覚え置き)の合流と確かめ | 2026-10-15T08:45:00 | 2026-10-15T09:15:00 | 合流の順は CR-740 → CR-758 → CR-757(frame-loop.ts のため)。 |  |  | 0 | 7 1 0 7 |  |
| 63 | 24 | CR-758(依存線とマーカーの干渉解消)の合流と確かめ | 2026-10-15T09:45:00 | 2026-10-15T10:15:00 |  |  |  | 0 | 9 1 0 7 |  |
| 64 | 25 | CR-757(全体日程のシフト)の合流と確かめ | 2026-10-15T10:15:00 | 2026-10-15T10:45:00 |  |  |  | 0 | 23 1 0 7 |  |
| 65 | 26 | CR-762(列の境目を引く幅の追従)の実装 | 2026-10-15T08:45:00 | 2026-10-15T12:30:00 | 見積: 7.25 時間 x 0.5。 |  |  | 0 |  |  |
| 66 | 27 | CR-762(列の境目を引く幅の追従)の合流と確かめ | 2026-10-15T12:30:00 | 2026-10-15T13:00:00 |  |  |  | 0 | 65 1 0 7 |  |
| 67 | 28 | CR-759(修正案の表の語・推奨の一括採用・下の帯)の実装 | 2026-10-15T13:00:00 | 2026-10-15T21:15:00 | 見積: 16.5 時間 x 0.5。 |  |  | 0 | 66 1 0 7 |  |
| 68 | 29 | CR-759(修正案の表の語と推奨の一括採用)の合流と確かめ | 2026-10-15T21:15:00 | 2026-10-15T21:45:00 |  |  |  | 0 | 67 1 0 7 |  |
| 69 | 30 | CR-760(表のステータスと種別の列)の実装 | 2026-10-15T21:45:00 | 2026-10-16T04:30:00 | 見積: 13.5 時間 x 0.5。CR-759 と同じ表の前文なので同じ席。 |  |  | 0 | 68 1 0 7 |  |
| 70 | 31 | CR-760(表のステータスと種別の列)の合流と確かめ | 2026-10-16T04:30:00 | 2026-10-16T05:00:00 |  |  |  | 0 | 69 1 0 7 |  |
| 22 | 32 | CR-756(分単位のダミー実績)の実装 | 2026-10-15T10:15:00 | 2026-10-15T13:45:00 | 見積: 6.75 時間 x 0.5。CR-758 の合流の後(schedule-layout.ts)。 |  |  | 0 | 63 1 0 7 |  |
| 71 | 33 | CR-756(分単位のダミー実績)の合流と確かめ | 2026-10-15T13:45:00 | 2026-10-15T14:15:00 |  |  |  | 0 | 22 1 0 7 |  |
| 72 | 34 | CR-761(列のフィルタの一覧の並びと残す値)の実装 | 2026-10-15T21:45:00 | 2026-10-16T02:00:00 | 見積: 8.5 時間 x 0.5。CR-759 の後。 |  |  | 0 | 68 1 0 7 |  |
| 73 | 35 | CR-761(列のフィルタの一覧)の合流と確かめ | 2026-10-16T02:00:00 | 2026-10-16T02:30:00 |  |  |  | 0 | 72 1 0 7 |  |
| 21 | 36 | CR-755(タイムゾーンの固定の時差と略称)の実装 | 2026-10-15T09:45:00 | 2026-10-15T19:15:00 | 見積: 19 時間 x 0.5。CR-751 の後(済み)。 |  |  | 0 |  |  |
| 74 | 37 | CR-755(タイムゾーンの固定の時差と略称)の合流と確かめ | 2026-10-15T19:15:00 | 2026-10-15T19:45:00 |  |  |  | 0 | 21 1 0 7 |  |
| 25 | 38 | CR-754(日付の欄と設定パネルの幅・閉じる・折り返し)の実装 | 2026-10-15T19:45:00 | 2026-10-16T03:15:00 | 見積: 15 時間 x 0.5。パネルの幅は CR-755〜757 が足す行の後に測るので最後。DFC-2517 も。 |  |  | 0 | 74 1 0 7, 71 1 0 7 |  |
| 75 | 39 | CR-754(日付の欄と設定パネル)の合流と確かめ | 2026-10-16T03:15:00 | 2026-10-16T03:45:00 |  |  |  | 0 | 25 1 0 7 |  |
| 15 | 40 | T-064(公開の名 約 479 の呼び方)の書き起こしと再検討 | 2026-10-15T08:15:00 | 2026-10-15T20:15:00 | CR-752 の後(済み)。479 名を 1 時間 60 名ほどで 8 時間、コードと違う名の再検討 4 時間。 |  |  | 0 |  |  |
| 76 | 41 | DFC-2645(手写し 13 か所)の生成への置き換え | 2026-10-15T20:15:00 | 2026-10-16T00:15:00 | 大きさ M。 |  |  | 0 |  |  |
| 77 | 42 | 古い STOP の印 16 件の除去 | 2026-10-16T00:15:00 | 2026-10-16T04:15:00 | 大きさ M。 |  |  | 0 |  |  |
| 78 | 43 | CR-765(Agent API の 22 のメンバと呼び方の原稿)の実装 | 2026-10-15T09:45:00 | 2026-10-15T15:30:00 | 見積: 11.5 時間 x 0.5。 |  |  | 0 |  |  |
| 79 | 44 | CR-765(Agent API の呼び方の原稿)の合流と確かめ | 2026-10-15T15:30:00 | 2026-10-15T16:00:00 |  |  |  | 0 | 78 1 0 7 |  |
| 80 | 45 | CR-763/764(飛び先のマーカーほか)の起草の仕上げ | 2026-10-15T22:00:00 | 2026-10-16T00:00:00 | 仮置き: 見積は起草の席がまだ出していない。 |  |  | 0 | 59 1 0 7 |  |
| 81 | 46 | CR-763/764(飛び先のマーカーほか)の実装 | 2026-10-16T00:00:00 | 2026-10-16T08:00:00 | 仮置き: 大きさ L。 |  |  | 0 |  |  |
| 82 | 47 | CR-763/764(飛び先のマーカーほか)の合流と確かめ | 2026-10-16T08:00:00 | 2026-10-16T08:30:00 |  |  |  | 0 | 81 1 0 7 |  |
| 83 | 48 | CR-766(文書の命令 88 が運ぶ値の原稿)の実装 | 2026-10-16T03:15:00 | 2026-10-16T12:00:00 | 見積: 17.5 時間 x 0.5。問い 1 の答えの後。 |  |  | 0 | 59 1 0 7 |  |
| 84 | 49 | CR-766(文書の命令が運ぶ値の原稿)の合流と確かめ | 2026-10-16T12:00:00 | 2026-10-16T12:30:00 |  |  |  | 0 | 83 1 0 7 |  |
| 85 | 50 | CR-767(状態機械の原稿)の波 1 の実装 | 2026-10-16T08:00:00 | 2026-10-16T13:30:00 | 見積: 22 時間を波 1 と 2 に半分ずつ、x 0.5。波 1 は CR-759 の後。 |  |  | 0 | 59 1 0 7, 68 1 0 7 |  |
| 86 | 51 | CR-767(状態機械の原稿)の波 2 の実装 | 2026-10-16T13:30:00 | 2026-10-16T19:00:00 | 波 2 は CR-760・762 の後。 |  |  | 0 | 70 1 0 7 |  |
| 87 | 52 | CR-767(状態機械の原稿)の合流と確かめ | 2026-10-16T19:00:00 | 2026-10-16T19:30:00 |  |  |  | 0 | 86 1 0 7 |  |
| 88 | 53 | CR-768(保存の媒体の型を表 T-024 へ)の実装 | 2026-10-16T05:00:00 | 2026-10-16T10:45:00 | 見積: 11.5 時間 x 0.5。FR-096 の確かめ。CR-759〜762 の後。 |  |  | 0 | 70 1 0 7, 73 1 0 7 |  |
| 89 | 54 | CR-768(保存の媒体の型)の合流と確かめ | 2026-10-16T10:45:00 | 2026-10-16T11:15:00 |  |  |  | 0 | 88 1 0 7 |  |
| 11 | 55 | 未検討 約 40 行(DFC-611・2560〜2569・2690〜2696 ほか)のトリアージ | 2026-10-16T10:45:00 | 2026-10-16T14:45:00 | 未検討 64 行から CR が名指す 20 行と AI 連携の行を除いた残り。台帳の提案だけ。大きさ M。 |  |  | 0 | 70 1 0 7 |  |
| 32 | 56 | トリアージで出た直しの実装 | 2026-10-16T14:45:00 | 2026-10-16T22:45:00 | 仮置き: 大きさ L。 |  |  | 0 |  |  |
| 18 | 57 | 仕様待ち 約 18 行(DFC-560・631・1063〜1073 ほか)の CR の起草 | 2026-10-16T04:15:00 | 2026-10-16T08:15:00 | 仕様待ち 50 行から CR が名指す 30 行と W5 の DFC-586・用語集の DFC-2175 を除いた残り。大きさ M。 |  |  | 0 |  |  |
| 35 | 58 | 仕様待ちの残りの CR の実装 | 2026-10-16T08:15:00 | 2026-10-16T16:15:00 | 大きさ L。 |  |  | 0 |  |  |
| 12 | 59 | 罠の束(DFC-544・547・548・549)の実装 | 2026-10-16T02:30:00 | 2026-10-16T06:30:00 | 大きさ M。 |  |  | 0 | 73 1 0 7 |  |
| 20 | 60 | 実装待ちの残り(DFC-464・532〜562 ほか約 30 行)の実装 | 2026-10-16T06:30:00 | 2026-10-16T14:30:00 | 実装待ち 41 行から CR が名指す 4 行と罠・DFC-730 を除いた残り。大きさ L。 |  |  | 0 |  |  |
| 19 | 61 | DFC-730(GP-1)の実装 | 2026-10-16T14:30:00 | 2026-10-16T16:30:00 | 大きさ S。 |  |  | 0 |  |  |
| 17 | 62 | 試験待ち 7 行(DFC-550・567・641 ほか)の仕様だけを読む試験 | 2026-10-16T12:00:00 | 2026-10-16T16:00:00 | 大きさ M。 |  |  | 0 | 75 1 0 7 |  |
| 13 | 63 | 用語集の JSON 化(DFC-2175)の仕様と実装 | 2026-10-16T16:00:00 | 2026-10-16T20:00:00 | 大きさ M。 |  |  | 0 |  |  |
| 90 | 64 | 英語の慣習の見直し(CR-769〜771)の起草 | 2026-10-16T19:00:00 | 2026-10-16T23:00:00 | 大きさ M。 |  |  | 0 | 89 1 0 7 |  |
| 91 | 65 | CR-769〜771(英語の慣習)の改名の実装 | 2026-10-16T23:00:00 | 2026-10-17T07:00:00 | 仮置き: 改名は全部の波の後。大きさ L。 |  |  | 0 | 75 1 0 7, 82 1 0 7, 79 1 0 7, 84 1 0 7, 87 1 0 7 |  |
| 92 | 66 | CR-769〜771(英語の慣習)の合流と確かめ | 2026-10-17T07:00:00 | 2026-10-17T08:00:00 |  |  |  | 0 | 91 1 0 7 |  |
| 36 | 67 | 全部の合流と台帳の締め | 2026-10-17T08:00:00 | 2026-10-17T09:00:00 | 非 AI の直しが全部入ったことを台帳で数える。 |  |  | 0 |  |  |
| 38 | 68 | OneDrive を止める(利用者に頼む) | 2026-10-17T09:00:00 | 2026-10-17T09:00:00 | JDG-2086。GT-2 の前。 |  |  | 0 | 36 1 0 7 | True |
| 37 | 69 | 1 枚のチェックリスト(user-checklist)の刷り直し | 2026-10-17T09:00:00 | 2026-10-17T11:00:00 | 入った直しに合わせて刷り直す。 |  |  | 0 |  |  |
| 39 | 70 | 一括の GT-2(非 AI の直しが全部入った sha) | 2026-10-17T11:00:00 | 2026-10-17T13:00:00 | 前の巡の試験だけで 468 秒、時間切れの再走を見込んで 2 時間。 |  |  | 0 | 38 1 0 7 |  |

| uid | wbsOrder | name | start | finish | notes | percentComplete | dependencies | milestone |
| --- | --- | --- | --- | --- | --- | --- | --- | --- |
| 40 | 71 | refactor と main へ push・Pages の配備 | 2026-10-17T13:00:00 | 2026-10-17T13:00:00 | GT-2 <sha> passed の行を確かめてから。 | 0 |  | True |
| 41 | 72 | 1 枚のチェックリストを実物で触る | 2026-10-17T13:00:00 | 2026-10-17T15:00:00 | 1 度だけ。 | 0 | 40 1 0 7 |  |
| 42 | 73 | チェックリストで出た直しの実装 | 2026-10-17T15:00:00 | 2026-10-17T19:00:00 | 仮置き。大きさ M。 | 0 | 41 1 0 7 |  |
| 43 | 74 | チェックリストの直しの GT-2 と push | 2026-10-17T19:00:00 | 2026-10-17T20:00:00 |  | 0 | 42 1 0 7 |  |
| 27 | 75 | W4(アダプタ層の分割)の前半 CR-578→579→580 の実装 | 2026-10-17T13:00:00 | 2026-10-17T21:00:00 | 一括の GT-2 の後(調整役の指示)。大きさ L。 | 0 | 40 1 0 7 |  |
| 28 | 76 | W4 の後半(CR-581 の後半と properties-panel)の実装 | 2026-10-17T21:00:00 | 2026-10-18T05:00:00 | 大きさ L。 | 0 |  |  |
| 29 | 77 | W5(異常系 DFC-586 ほか)の仕様 | 2026-10-18T05:00:00 | 2026-10-18T13:00:00 | JDG-1479 により W4 の後。大きさ L。 | 0 |  |  |
| 30 | 78 | W5(異常系 DFC-922 ほか)の実装と試験 | 2026-10-18T13:00:00 | 2026-10-18T21:00:00 | 大きさ L。 | 0 |  |  |
| 31 | 79 | W4・W5 の合流と GT-2・push | 2026-10-18T21:00:00 | 2026-10-18T23:00:00 |  | 0 | 30 1 0 7 |  |
| 45 | 80 | CR-695(対話欄の廃止)の実装 | 2026-10-17T13:00:00 | 2026-10-17T21:00:00 | 一括の GT-2 の後。大きさ L。 | 0 | 40 1 0 7 |  |
| 46 | 81 | CR-697(取次が口と鍵を覚える)の実装 | 2026-10-17T13:00:00 | 2026-10-17T21:00:00 | 大きさ L。 | 0 | 40 1 0 7 |  |
| 47 | 82 | DFC-2214・2215(AM-19 の説明)の仕様と実装 | 2026-10-17T13:00:00 | 2026-10-17T17:00:00 | 大きさ M。 | 0 | 40 1 0 7 |  |
| 44 | 83 | 正式公開の判断(JDG-1740) | 2026-10-19T06:45:00 | 2026-10-19T06:45:00 | 解明・リファクタ(W4・W5)・分刻みの日程が終わったことを確かめる。AI 連携は待たない。 | 0 | 31 1 0 7 | True |
| 48 | 84 | AI 連携の合流と GT-2・push | 2026-10-18T23:00:00 | 2026-10-19T01:00:00 |  | 0 | 45 1 0 7, 46 1 0 7, 47 1 0 7 |  |
| 49 | 85 | 計画の終わり | 2026-10-19T06:45:00 | 2026-10-19T06:45:00 |  | 0 | 44 1 0 7 | True |
